# 智慧中医系统net转java工作计划

Schedule from MS Project, 2018-09-04 to 2018-12-21, A marks actual dates.
wimxt.com

## Calendars

- 标准: Mon-Fri 08:00-12:00, 13:00-17:00; Sat-Sun off. Exceptions (off unless hours are given): 2018-09-29 to 2018-09-30 08:00-12:00, 13:00-17:00, 2018-11-03 08:00-12:00, 13:00-17:00.

## Resources

| Resource |
| --- |
| 吕华伟 |
| 李超 |
| 吕苑 |
| 李亚 |
| 王晨 |
| 弭吉荣 |

## Schedule

| ID | WBS | Task | Duration | Start | Finish | Predecessors | Complete | Remaining | Total slack | Free slack | Constraint | Resources | Work | Actual work |
| --- | --- | --- | --- | --- | --- | --- | --- | --- | --- | --- | --- | --- | --- | --- |
| 1 | 1 | **智慧中医系统2.0** | 81.67d? | 2018-09-04 A | 2018-12-21 |  | 9% | 73.93d? | 0d |  |  | 吕华伟; 李超; 吕苑; 李亚; 王晨 | 8874.67h | 1789.28h |
| 2 | 1.1 | **业务需求及现有程序梳理** | 21d? | 2018-09-04 | 2018-09-30 |  |  |  | 60.67d |  |  |  | 1288h |  |
| 3 | 1.1.1 | 业务需求了解(查看操作手册) | 5d? | 2018-09-04 | 2018-09-10 |  |  |  | 76.47d | 0d | start no earlier than 2018-09-04 | 李亚; 吕苑; 王晨 | 120h |  |
| 4 | 1.1.2 | 现有CS程序界面操作功能了解 | 4d? | 2018-09-04 | 2018-09-07 |  |  |  | 77.67d |  | start no earlier than 2018-09-04 | 李亚; 王晨 | 64h |  |
| 5 | 1.1.3 | 组内进行一次业务需求培训讨论，就已经了解的需求 | 0.2d? | 2018-09-11 | 2018-09-11 | 3 |  |  | 76.47d |  |  | 李超; 李亚; 吕华伟; 吕苑; 王晨 | 8h |  |
| 6 | 1.1.4 | 现有的CS程序功能测试（随了解界面操作任务进行） | 6d? | 2018-09-04 | 2018-09-11 |  |  |  | 75.67d |  | start no earlier than 2018-09-04 | 李亚; 王晨 | 96h |  |
| 7 | 1.1.5 | **现有CS程序功能整理** | 21d? | 2018-09-04 | 2018-09-30 |  |  |  | 60.67d |  |  | 吕华伟; 吕苑; 李超 | 1000h |  |
| 8 | 1.1.5.1 | 现有程序规模 | 2d? | 2018-09-10 | 2018-09-11 |  |  |  | 75.67d |  | start no earlier than 2018-09-10 | 吕苑 | 16h |  |
| 9 | 1.1.5.2 | 技术难度/复杂功能点整理 | 8d? | 2018-09-04 | 2018-09-13 |  |  |  | 73.67d |  | start no earlier than 2018-09-04 | 吕苑 | 64h |  |
| 10 | 1.1.5.3 | 程序组织结构分析 | 2d? | 2018-09-05 | 2018-09-06 |  |  |  | 78.67d |  |  | 吕苑 | 16h |  |
| 11 | 1.1.5.4 | 数据库存储过程、函数、视图使用情况难易程度统计分析 | 10d? | 2018-09-10 | 2018-09-21 |  |  |  | 67.67d |  | finish no earlier than 2018-09-21 | 李超 | 80h |  |
| 12 | 1.1.5.5 | 现有数据库105张表转mysql数据库表结构整理建表语句编写 | 2d? | 2018-09-13 | 2018-09-14 |  |  |  | 72.67d |  | start no earlier than 2018-09-13 | 李超 | 16h |  |
| 13 | 1.1.5.6 | 现有数据库数据导入mysql数据库中，数据转换导入核对 | 4d? | 2018-09-17 | 2018-09-20 |  |  |  | 68.67d |  | finish no earlier than 2018-09-20 | 李超 | 32h |  |
| 14 | 1.1.5.7 | 数据库中存储过程、函数、视图逻辑分析转mysql数据库重写 | 8d? | 2018-09-21 | 2018-09-30 |  |  |  | 60.67d |  | start no earlier than 2018-09-21 | 李超 | 64h |  |
| 15 | 1.1.5.8 | 核心算法分析 | 6d? | 2018-09-11 | 2018-09-18 |  |  |  | 70.67d |  | start no earlier than 2018-09-11 | 吕华伟; 李超; 吕苑 | 144h |  |
| 16 | 1.1.5.9 | 现有程序涉及到的数据库逻辑整理 | 4d? | 2018-09-12 | 2018-09-17 |  |  |  | 71.67d |  | start no earlier than 2018-09-12 | 吕苑; 王晨 | 64h |  |
| 17 | 1.2 | 服务器及个人电脑软件环境安装配置 | 1d? | 2018-09-05 | 2018-09-05 |  |  |  | 79.67d |  |  | 吕华伟; 李超; 王晨 | 24h |  |
| 18 | 1.3 | **需要用到的技术的预研** | 14d? | 2018-09-05 | 2018-09-24 |  |  |  | 66.67d |  |  | 吕华伟; 李超 | 224h |  |
| 19 | 1.3.1 | 开发用到的前端后端及数据库技术 | 14d? | 2018-09-05 | 2018-09-24 |  |  |  | 65.67d |  | finish no earlier than 2018-09-24 |  |  |  |
| 20 | 1.3.2 | 审核使用技术 | 1d? | 2018-09-24 | 2018-09-24 |  |  |  | 66.67d |  | start no earlier than 2018-09-24 |  |  |  |
| 21 | 1.4 | **开发框架搭建** | 9d? | 2018-09-05 | 2018-09-17 |  |  |  | 71.67d |  |  | 吕华伟 | 72h |  |
| 22 | 1.4.1 | 搭建框架--zhzy后端 | 3d? | 2018-09-10 | 2018-09-12 |  |  |  | 74.67d |  | start no earlier than 2018-09-10 |  |  |  |
| 23 | 1.4.2 | 前端框架搭建 | 6d? | 2018-09-10 | 2018-09-17 |  |  |  | 71.67d |  | finish no earlier than 2018-09-17 |  |  |  |
| 24 | 1.4.3 | **框架功能组件** | 2d? | 2018-09-05 | 2018-09-06 |  |  |  | 78.67d |  |  |  |  |  |
| 25 | 1.4.3.1 | 附件上传 | 2d? | 2018-09-05 | 2018-09-06 |  |  |  | 77.67d |  | finish no earlier than 2018-09-06 |  |  |  |
| 26 | 1.4.3.2 | 消息组件 | 2d? | 2018-09-05 | 2018-09-06 |  |  |  | 77.67d |  | finish no earlier than 2018-09-06 |  |  |  |
| 27 | 1.5 | 研究医疗竞品界面及相关医疗行业WEB UI | 5d? | 2018-09-06 | 2018-09-12 |  |  |  | 74.67d |  | finish no earlier than 2018-09-12 | 李亚; 吕华伟 | 80h |  |
| 28 | 1.6 | 根据选用前端框架风格设计UI | 9d? | 2018-09-12 | 2018-09-24 |  |  |  | 66.67d |  | start no earlier than 2018-09-12 | 李亚; 吕华伟 | 144h |  |

| ID | WBS | Task | Type | Duration | Start | Finish | Predecessors | Complete | Remaining | Total slack | Free slack | Constraint | Resources | Work | Actual work |
| --- | --- | --- | --- | --- | --- | --- | --- | --- | --- | --- | --- | --- | --- | --- | --- |
| 29 | 1.7 | **设计** |  | 22d? | 2018-09-25 A | 2018-10-22 A |  | 100% |  |  |  |  | 王晨; 吕华伟; 李超; 李亚; 吕苑; 弭吉荣 | 1424h | 1424h |
| 30 | 1.7.1 | 原型设计 |  | 4d? | 2018-09-25 A | 2018-09-28 A |  | 100% |  |  |  | finish no earlier than 2018-09-28 | 王晨; 吕华伟; 李超; 吕苑; 李亚 | 160h | 160h |
| 31 | 1.7.2 | 原型内部评审 |  | 1d? | 2018-09-29 A | 2018-09-29 A | 30 | 100% |  |  |  | start no earlier than 2018-09-29 | 弭吉荣; 吕华伟; 李超; 吕苑; 李亚; 王晨 | 48h | 48h |
| 32 | 1.7.3 | 原型修改 |  | 1d? | 2018-09-30 A | 2018-09-30 A | 31 | 100% |  |  |  | start no earlier than 2018-09-30 | 王晨; 吕华伟; 李超; 李亚; 吕苑 | 40h | 40h |
| 33 | 1.7.4 | 原型评审 |  | 1d? | 2018-10-08 A | 2018-10-08 A |  | 100% |  |  |  | start no earlier than 2018-10-08 |  |  |  |
| 34 | 1.7.5 | 原型修改 |  | 1d? | 2018-10-09 A | 2018-10-09 A |  | 100% |  |  |  | start no earlier than 2018-10-09 |  |  |  |
| 35 | 1.7.6 | UI主要界面及风格设计 |  | 4d? | 2018-10-08 A | 2018-10-11 A |  | 100% |  |  |  | finish no earlier than 2018-10-11 | 李亚 | 32h | 32h |
| 36 | 1.7.7 | UI设计主界面及风格内部评审 |  | 1d? | 2018-10-12 A | 2018-10-12 A | 35 | 100% |  |  |  |  | 弭吉荣; 李亚; 吕华伟; 李超; 吕苑; 王晨 | 48h | 48h |
| 37 | 1.7.8 | UI主要界面及风格设计调整 | milestone | 0d? | 2018-10-13 A | 2018-10-13 A | 36 | 100% |  |  |  | start no earlier than 2018-10-13 |  |  |  |
| 38 | 1.7.9 | UI主要界面及风格设计评审 |  | 1d? | 2018-10-15 A | 2018-10-15 A | 37 | 100% |  |  |  |  |  |  |  |
| 39 | 1.7.10 | UI评审修改及剩余界面设计 |  | 5d? | 2018-10-16 A | 2018-10-22 A | 38 | 100% |  |  |  |  | 李亚 | 40h | 40h |
| 40 | 1.8 | **第一轮核心模块开发** |  | 21d? | 2018-10-15 A | 2018-11-09 |  | 14% | 18.02d? | 29.67d |  |  |  | 664h | 56h |
| 41 | 1.8.1 | 样例程序（前端+后端）做成 |  | 7d? | 2018-10-15 A | 2018-10-23 A |  | 100% |  |  |  | finish no earlier than 2018-10-23 | 吕华伟 | 56h | 56h |
| 42 | 1.8.2 | **功能开发** |  | 15d? | 2018-10-16 | 2018-11-03 | 36 |  |  | 34.67d |  |  |  | 296h |  |
| 43 | 1.8.2.1 | 门诊挂号 |  | 4d? | 2018-10-23 | 2018-10-26 |  |  |  | 40.67d |  | finish no earlier than 2018-10-26 | 吕苑 | 32h |  |
| 44 | 1.8.2.2 | 临症系统 |  | 9d? | 2018-10-24 | 2018-11-03 |  |  |  | 34.67d |  | finish no earlier than 2018-11-03 | 吕华伟; 吕苑 | 144h |  |
| 45 | 1.8.2.3 | 功能涉及的数据库功能 |  | 15d? | 2018-10-16 | 2018-11-03 |  |  |  | 34.67d |  | finish no earlier than 2018-11-03 | 李超 | 120h |  |
| 46 | 1.8.3 | 功能测试 |  | 2.25d? | 2018-11-05 | 2018-11-07 |  |  |  | 31.67d |  | finish no earlier than 2018-11-07 | 李超; 李亚; 吕华伟; 吕苑 | 72h |  |
| 47 | 1.8.4 | 测试问题修改 |  | 3d? | 2018-11-07 | 2018-11-09 |  |  |  | 29.67d |  | start no earlier than 2018-11-07 | 吕华伟; 吕苑 | 48h |  |
| 48 | 1.8.5 | **设计相应修改** |  | 7d? | 2018-10-29 | 2018-11-05 |  |  |  | 28.67d | 0d |  |  | 192h |  |
| 49 | 1.8.5.1 | 原型设计 |  | 3d? | 2018-10-29 | 2018-10-31 |  |  |  | 32.67d |  | start no earlier than 2018-10-29 | 吕苑; 李亚 | 48h |  |
| 50 | 1.8.5.2 | 原型评审 |  | 3d? | 2018-11-01 | 2018-11-03 |  |  |  | 29.67d |  | finish no earlier than 2018-11-03 | 吕华伟; 李超; 吕苑; 李亚 | 96h |  |
| 51 | 1.8.5.3 | 原型修改 |  | 1d? | 2018-11-03 | 2018-11-03 |  |  |  | 29.67d |  | start no earlier than 2018-11-03 | 吕苑; 李亚 | 16h |  |
| 52 | 1.8.5.4 | 数据库设计 |  | 2d? | 2018-11-03 | 2018-11-05 |  |  |  | 28.67d |  | finish no earlier than 2018-11-05 | 李超; 吕华伟 | 32h |  |

| ID | WBS | Task | Duration | Start | Finish | Predecessors | Total slack | Free slack | Constraint | Resources | Work |
| --- | --- | --- | --- | --- | --- | --- | --- | --- | --- | --- | --- |
| 53 | 1.9 | **第二轮业务模块开发** | 8d? | 2018-11-02 | 2018-11-12 |  | 23.67d |  |  |  | 376h |
| 54 | 1.9.1 | **功能开发** | 5d? | 2018-11-06 | 2018-11-12 | 48 | 28.67d |  |  |  | 120h |
| 55 | 1.9.1.1 | 网上挂号 | 4d? | 2018-11-06 | 2018-11-09 |  | 29.67d |  | finish no earlier than 2018-11-01 | 吕华伟 | 32h |
| 56 | 1.9.1.2 | 针灸系统 | 3d? | 2018-11-06 | 2018-11-08 |  | 30.67d |  | start no earlier than 2018-10-29 | 吕华伟; 王晨 | 48h |
| 57 | 1.9.1.3 | 肛肠系统 | 5d? | 2018-11-06 | 2018-11-12 |  | 28.67d |  | finish no earlier than 2018-11-02 | 吕苑 | 40h |
| 58 | 1.9.2 | 功能测试 | 4d? | 2018-11-02 | 2018-11-06 |  | 32.67d |  | start no earlier than 2018-11-02 | 李超; 李亚 | 64h |
| 59 | 1.9.3 | 测试问题修改 | 5d? | 2018-11-05 | 2018-11-09 |  | 29.67d |  | finish no earlier than 2018-11-09 | 吕华伟; 吕苑; 王晨 | 120h |
| 60 | 1.9.4 | **设计相应修改** | 3d? | 2018-11-05 | 2018-11-07 |  | 21.67d | 2d |  |  | 72h |
| 61 | 1.9.4.1 | 原型设计 | 1d? | 2018-11-05 | 2018-11-05 |  | 21.67d | 0d | start no earlier than 2018-11-05 | 李亚 | 8h |
| 62 | 1.9.4.2 | 原型评审 | 1d? | 2018-11-06 | 2018-11-06 | 61 | 21.67d | 0d |  | 弭吉荣; 吕华伟; 李超; 吕苑; 王晨 | 40h |
| 63 | 1.9.4.3 | 原型修改 | 1d? | 2018-11-07 | 2018-11-07 | 62 | 21.67d |  |  | 李亚 | 8h |
| 64 | 1.9.4.4 | 数据库设计 | 1d? | 2018-11-06 | 2018-11-06 | 61 | 22.67d |  |  | 李超; 吕华伟 | 16h |
| 65 | 1.10 | **第三轮基础与权限模块及剩余模块开发** | 17d? | 2018-11-12 | 2018-12-04 |  | 12.67d |  |  |  | 744h |
| 66 | 1.10.1 | **功能开发** | 15d? | 2018-11-12 | 2018-11-30 | 60 | 14.67d |  |  |  | 288h |
| 67 | 1.10.1.1 | 中医住院 | 3d? | 2018-11-12 | 2018-11-14 |  | 19.67d | 0d | start no earlier than 2018-11-12 | 吕苑 | 24h |
| 68 | 1.10.1.2 | 康复系统 | 3d? | 2018-11-12 | 2018-11-14 |  | 24.67d | 0d | start no earlier than 2018-11-12 | 王晨 | 24h |
| 69 | 1.10.1.3 | 骨伤系统 | 2d? | 2018-11-15 | 2018-11-16 | 68 | 24.67d |  |  | 吕苑 | 16h |
| 70 | 1.10.1.4 | 治未病系统 | 2d? | 2018-11-15 | 2018-11-16 | 67 | 19.67d | 5d |  | 王晨 | 16h |
| 71 | 1.10.1.5 | 基础数据系统 | 5d? | 2018-11-26 | 2018-11-30 | 70 | 14.67d |  | finish no earlier than 2018-11-30 | 吕华伟; 王晨; 吕苑 | 120h |
| 72 | 1.10.1.6 | 权限系统 | 5d? | 2018-11-12 | 2018-11-16 |  | 24.67d |  | finish no earlier than 2018-11-16 | 吕华伟 | 40h |
| 73 | 1.10.1.7 | 工作流 | 6d? | 2018-11-16 | 2018-11-23 |  | 19.67d |  | start no earlier than 2018-11-16 | 吕华伟 | 48h |
| 74 | 1.10.2 | 功能测试 | 12d? | 2018-11-15 | 2018-11-30 |  | 14.67d |  | finish no earlier than 2018-11-30 | 李亚; 李超 | 192h |
| 75 | 1.10.3 | 测试问题修改 | 11d? | 2018-11-20 | 2018-12-04 |  | 12.67d |  | finish no earlier than 2018-12-04 | 吕苑; 王晨; 吕华伟 | 264h |
| 76 | 1.11 | 系统功能演示评审 | 1d? | 2018-12-05 | 2018-12-05 |  | 11.67d |  | start no earlier than 2018-12-05 | 弭吉荣; 李超; 李亚; 吕华伟; 吕苑; 王晨 | 48h |

| ID | WBS | Task | Duration | Start | Finish | Predecessors | Total slack | Free slack | Constraint | Resources | Work |
| --- | --- | --- | --- | --- | --- | --- | --- | --- | --- | --- | --- |
| 77 | 1.12 | **第四轮报表模块开发** | 7d? | 2018-11-26 | 2018-12-04 |  | 12.67d |  |  |  | 64h |
| 78 | 1.12.1 | **功能开发** | 2.5d? | 2018-11-26 | 2018-11-28 |  | 17.17d |  |  |  | 40h |
| 79 | 1.12.1.1 | 报表模块 | 2.5d? | 2018-11-26 | 2018-11-28 |  | 17.17d |  | start no earlier than 2018-11-26 | 王晨; 李超 | 40h |
| 80 | 1.12.2 | 功能测试 | 1d? | 2018-12-03 | 2018-12-03 |  | 12.67d | 0d | start no earlier than 2018-12-03 | 李超; 李亚 | 16h |
| 81 | 1.12.3 | 测试问题修改 | 1d? | 2018-12-04 | 2018-12-04 | 80 | 12.67d |  |  | 王晨 | 8h |
| 82 | 1.13 | 系统测试 | 11d? | 2018-09-05 | 2018-09-19 | 76 | 69.67d |  |  | 李超; 李亚 | 176h |
| 83 | 1.14 | 测试问题与评审问题修改 | 11d? | 2018-12-06 | 2018-12-20 |  | 0d |  | start no earlier than 2018-12-06 | 吕苑; 吕华伟; 王晨 | 264h |
| 84 | 1.15 | 版本2.0发布 | 0.67d? | 2018-12-21 | 2018-12-21 | 83 | 0d |  |  | 李超; 吕华伟; 王晨 | 16h |
